# Diagrama Gantt con depreciacion de equipos, consumo energetico y nube

Schedule from MS Project, 2020-12-01 to 2022-05-20, costs in $, A marks actual dates.
Microsoft

## Calendars

- Estándar: Mon-Fri 09:00-13:00, 15:00-19:00; Sat-Sun off. Exceptions (off unless hours are given): 2020-12-11 to 2021-01-24 (Vacaciones, recurring).

## Resources

| Resource | Group | Rate |
| --- | --- | --- |
| Paola Osorio | Programador | 6081 |
| Maria de los Angeles Ordoñez | Documentador | 6081 |
| Eliseo Ricaurte | Documentador | 6081 |
| Nicolas Rodriguez | Programador | 6081 |
| Juan Carlos Suarez | Lider | 6081 |
| AWS MySQL Aurora |  | 224338 |
| AWS Data Pipeline |  | 2154850 |
| Escritorio |  | 2352 |
| Silla |  | 2256 |
| Equipo de computo |  | 6032 |
| Internet |  | 4296 |
| Energia |  | 429 |
| Paquete de office |  | 239000 |
| Microsoft project |  | 38270 |

## Schedule

| ID | WBS | Task | Type | Duration | Start | Finish | Predecessors | Complete | Remaining | Actual start | Actual finish | Constraint | Resources | Work | Actual work | Cost | Actual cost |
| --- | --- | --- | --- | --- | --- | --- | --- | --- | --- | --- | --- | --- | --- | --- | --- | --- | --- |
| 1 | 1 | **Sistema de información para la gestión de la producción avícola de traspatio urbana y periurbana con vocación de postura** |  | 384d | 2020-12-01 A | 2022-05-20 |  | 46% | 208.13d |  |  |  |  | 2161.8h | 161.8h | 13,555,529.8 | 1,125,781.8 |
| 2 | 1.1 | **1. Analisis** |  | 83d | 2020-12-01 A | 2021-03-25 |  | 100% |  |  | 2021-03-05 |  |  | 54h | 54h | 347,752 | 347,752 |
| 3 | 1.1.1 | **Componente Metodologico** |  | 83d | 2020-12-01 A | 2021-03-25 |  | 100% |  |  | 2021-03-05 |  |  | 54h | 54h | 347,752 | 347,752 |
| 4 | 1.1.1.1 | Nombre del proyecto | manual | 0.06d | 2020-12-01 A | 2020-12-01 A |  | 100% |  |  |  |  | Juan Carlos Suarez; Equipo de computo; Silla; Energia; Escritorio; Internet | 1h | 1h | 18,191 | 18,191 |
| 5 | 1.1.1.2 | Objetivo general | manual | 0.75d | 2021-01-25 A | 2021-01-25 A | 4 | 100% |  |  |  | finish no earlier than 2021-01-25 | Juan Carlos Suarez; Equipo de computo [200%]; Silla [200%]; Energia; Escritorio [200%]; Internet | 1h | 1h | 28,831 | 28,831 |
| 6 | 1.1.1.3 | Objetivos especificos | manual | 1.12d | 2021-01-25 A | 2021-02-26 A | 5 | 100% |  |  |  | finish no earlier than 2021-01-25 | Juan Carlos Suarez; Equipo de computo; Silla; Energia; Escritorio; Internet [50%] | 1h | 1h | 16,043 | 16,043 |
| 7 | 1.1.1.4 | Planteamiento del problema | manual | 1d | 2021-01-25 A | 2021-01-26 A | 5 | 100% |  |  |  | start no earlier than 2021-01-25 | Juan Carlos Suarez; Equipo de computo; Silla; Energia; Escritorio; Internet | 2h | 2h | 21,446 | 21,446 |
| 8 | 1.1.1.5 | Alcance del proyecto | manual | 1.62d | 2021-01-26 A | 2021-01-27 A | 7 | 100% |  |  |  |  | Juan Carlos Suarez; Equipo de computo; Silla; Energia; Escritorio; Internet | 7h | 7h | 23,591 | 23,591 |
| 9 | 1.1.1.6 | Justificacion | manual | 1.75d | 2021-01-27 A | 2021-01-28 A | 7 | 100% |  |  |  | start no earlier than 2021-01-27 | Juan Carlos Suarez; Equipo de computo; Silla; Energia; Escritorio; Internet | 8h | 8h | 36,680 | 36,680 |
| 10 | 1.1.1.7 | **Levantamiento de informacion** |  | 20.25d | 2021-02-25 | 2021-03-25 |  | 100% |  | 2021-02-01 | 2021-03-05 |  |  | 34h | 34h | 202,970 | 202,970 |
| 11 | 1.1.1.7.1 | Entrevista a experto avicola | manual | 0.25d | 2021-02-03 A | 2021-02-03 A | 5 | 100% |  |  |  | finish no earlier than 2021-02-03 | Juan Carlos Suarez; Equipo de computo; Silla; Energia; Escritorio; Internet | 2h | 2h | 21,446 | 21,446 |
| 12 | 1.1.1.7.2 | Entrevista a productor avicola | manual | 1.25d | 2021-02-05 A | 2021-02-08 A | 11 | 100% |  |  |  | start no earlier than 2021-02-05 | Juan Carlos Suarez; Equipo de computo; Silla; Energia; Escritorio; Internet | 2h | 2h | 21,446 | 21,446 |
| 13 | 1.1.1.7.3 | Encuesta | manual | 10.5d | 2021-02-01 A | 2021-03-05 A | 11 | 100% |  |  |  | finish no earlier than 2021-02-05 | Eliseo Ricaurte; Juan Carlos Suarez; Energia; Equipo de computo [200%]; Escritorio [200%]; Internet [300%]; Silla [200%] | 30h | 30h | 160,078 | 160,078 |
| 14 | 1.2 | **2. Planeacion:** |  | 146.06d | 2021-03-04 A | 2021-09-24 A |  | 100% |  |  |  |  |  | 49.8h | 49.8h | 474,995.8 | 474,995.8 |
| 15 | 1.2.1 | **Informe de Requerimientos (Estandar IEEE 830)** |  | 20.25d | 2021-03-04 A | 2021-04-01 |  | 100% |  |  | 2021-03-10 |  |  | 13.8h | 13.8h | 170,185.8 | 170,185.8 |
| 16 | 1.2.1.1 | Requerimientos funcionales y no funcionales | manual | 1.75d | 2021-03-05 A | 2021-03-08 A | 10 | 100% |  |  |  |  | Juan Carlos Suarez; Maria de los Angeles Ordoñez; Energia; Equipo de computo [200%]; Escritorio [200%]; Internet; Silla [200%] | 4h | 4h | 38,596 | 38,596 |
| 17 | 1.2.1.2 | Especificaciones de casos de uso | manual | 1.12d | 2021-03-08 A | 2021-03-09 A | 16 | 100% |  |  |  | start no earlier than 2020-12-03 | Maria de los Angeles Ordoñez; Juan Carlos Suarez; Energia; Equipo de computo [200%]; Escritorio [200%]; Internet; Silla [200%] | 4h | 4h | 38,596 | 38,596 |
| 18 | 1.2.1.3 | Diagrama de casos de uso | manual | 1.75d | 2021-03-04 A | 2021-03-05 A | 17 | 100% |  |  |  |  | Nicolas Rodriguez; Energia; Equipo de computo; Escritorio; Internet; Silla | 4h | 4h | 27,956 | 27,956 |
| 19 | 1.2.1.4 | Caso de uso extendido | manual | 1.75d | 2021-03-09 A | 2021-03-10 A | 17 | 100% |  |  |  |  | Nicolas Rodriguez; Eliseo Ricaurte; Juan Carlos Suarez; Maria de los Angeles Ordoñez; Energia; Equipo de computo [400%]; Escritorio [400%]; Internet [400%]; Silla [400%] | 1.8h | 1.8h | 65,037.8 | 65,037.8 |
| 20 | 1.2.2 | **Ejecucion admnistrativa** |  | 104.06d | 2021-05-03 A | 2021-09-24 A |  | 100% |  |  |  |  |  | 16h | 16h | 150,094 | 150,094 |
| 21 | 1.2.2.1 | Cronograma, presupuesto y selección de personal | manual | 1.75d | 2021-05-03 A | 2021-05-04 A | 5 | 100% |  |  |  |  | Juan Carlos Suarez; Equipo de computo; Silla; Energia; Escritorio; Internet | 4h | 4h | 27,956 | 27,956 |
| 22 | 1.2.2.2 | Informe de costos (hardware y software) | manual | 1d | 2021-05-05 A | 2021-05-05 A | 21 | 100% |  |  |  |  | Juan Carlos Suarez; Energia; Equipo de computo; Escritorio; Internet; Silla | 8h | 8h | 32,072 | 32,072 |
| 23 | 1.2.2.3 | Actualizacion de Informe de costos (hardware y software) |  | 1d | 2021-05-17 A | 2021-05-17 A | 22 | 100% |  |  |  |  | Energia [12.5%]; Equipo de computo; Escritorio; Internet; Juan Carlos Suarez [12.5%]; Silla | 2h | 2h | 21,446 | 21,446 |
| 24 | 1.2.2.4 | Uso de sistemas de integración continua |  | 0.06d | 2021-09-24 A | 2021-09-24 A | 22 | 100% |  |  |  | start no earlier than 2021-09-24 | Eliseo Ricaurte; Energia; Equipo de computo; Escritorio; Internet; Microsoft project; Silla | 1h | 1h | 56,461 | 56,461 |
| 25 | 1.2.2.5 | Inventario de hardware y software | manual | 1d | 2021-05-06 A | 2021-05-06 A | 22 | 100% |  |  |  |  | Energia; Escritorio; Internet; Juan Carlos Suarez; Silla | 1h | 1h | 12,159 | 12,159 |

| ID | WBS | Task | Type | Duration | Start | Finish | Predecessors | Complete | Remaining | Actual finish | Constraint | Resources | Work | Actual work | Cost | Actual cost |
| --- | --- | --- | --- | --- | --- | --- | --- | --- | --- | --- | --- | --- | --- | --- | --- | --- |
| 26 | 1.2.3 | **Diseño conceptual** |  | 43d | 2021-03-12 A | 2021-05-11 A |  | 100% |  |  |  |  | 20h | 20h | 154,716 | 154,716 |
| 27 | 1.2.3.1 | Mapa de procesos BPMN | manual | 0.25d | 2021-03-18 A | 2021-03-18 A | 12 | 100% |  |  | start no earlier than 2020-12-09 | Juan Carlos Suarez; Equipo de computo; Silla; Energia; Escritorio; Internet | 2h | 2h | 21,446 | 21,446 |
| 28 | 1.2.3.2 | Diagrama de flujo de proceso BPMN | manual | 1.75d | 2021-03-12 A | 2021-03-15 A | 17 | 100% |  |  | start no earlier than 2020-12-09 | Juan Carlos Suarez; Maria de los Angeles Ordoñez; Energia; Equipo de computo [200%]; Escritorio [200%]; Internet [200%]; Silla [200%] | 4h | 4h | 42,892 | 42,892 |
| 29 | 1.2.3.3 | Diagrama de despliegue | manual | 0.25d | 2021-05-10 A | 2021-05-10 A | 17 | 100% |  |  | start no earlier than 2021-05-10 | Paola Osorio; Energia; Equipo de computo; Escritorio; Internet; Silla | 2h | 2h | 21,446 | 21,446 |
| 30 | 1.2.3.4 | Modelo entidad-relacion y diccionario de datos | manual | 1d | 2021-05-10 A | 2021-05-10 A | 17 | 100% |  |  | start no earlier than 2021-05-10 | Nicolas Rodriguez; Energia; Equipo de computo; Escritorio; Internet; Silla | 8h | 8h | 40,976 | 40,976 |
| 31 | 1.2.3.5 | Diagrama de clases | manual | 1.25d | 2021-05-10 A | 2021-05-11 A | 30 | 100% |  |  |  | Eliseo Ricaurte; Energia; Equipo de computo; Escritorio; Internet; Silla | 4h | 4h | 27,956 | 27,956 |
| 32 | 1.3 | **3. Ejecucion:** |  | 169d | 2021-05-10 A | 2021-12-30 |  | 37% | 106.34d |  |  |  | 618h | 58h | 3,135,114 | 303,034 |
| 33 | 1.3.1 | **Base de datos** |  | 33.75d | 2021-09-13 A | 2021-10-28 |  | 100% |  | 2021-09-20 |  |  | 24h | 24h | 145,536 | 145,536 |
| 34 | 1.3.1.1 | Construccion de la Base de Datos (DDL) | manual | 0.75d | 2021-09-13 A | 2021-09-13 A | 30 | 100% |  |  | finish no earlier than 2021-09-13 | Nicolas Rodriguez; Juan Carlos Suarez; Paola Osorio; Energia; Equipo de computo; Escritorio; Internet; Silla | 8h | 8h | 52,280 | 52,280 |
| 35 | 1.3.1.2 | Datos insertados en la Base de Datos (DML) | manual | 1d | 2021-09-17 A | 2021-09-17 A | 34 | 100% |  |  | start no earlier than 2021-09-17 | Nicolas Rodriguez; Juan Carlos Suarez; Paola Osorio; Energia; Equipo de computo; Escritorio; Internet; Silla | 8h | 8h | 52,280 | 52,280 |
| 36 | 1.3.1.3 | Consultas y Joins en la Base de Datos (DML) | manual | 1.75d | 2021-09-17 A | 2021-09-20 A | 34 | 100% |  |  | start no earlier than 2021-09-17 | Paola Osorio; Energia; Equipo de computo; Escritorio; Internet; Silla | 8h | 8h | 40,976 | 40,976 |
| 37 | 1.3.2 | **Prototipado** |  | 97.75d | 2021-05-10 A | 2021-09-22 A |  | 100% |  |  |  |  | 34h | 34h | 157,498 | 157,498 |
| 38 | 1.3.2.1 | Prototipo no funcional: Mockup | manual | 4d | 2021-05-10 A | 2021-05-13 A | 15 | 100% |  |  | start no earlier than 2021-05-10 | Juan Carlos Suarez; Energia; Equipo de computo; Escritorio; Internet; Silla | 16h | 16h | 67,016 | 67,016 |
| 39 | 1.3.2.2 | Prototipo no funcional: HTML y CCS |  | 0.75d | 2021-09-22 A | 2021-09-22 A | 38 | 100% |  |  | finish no earlier than 2021-09-22 | Eliseo Ricaurte; Energia; Equipo de computo; Escritorio; Internet; Juan Carlos Suarez; Nicolas Rodriguez; Paola Osorio; Silla | 18h | 18h | 90,482 | 90,482 |
| 40 | 1.3.3 | **Codificacion y conexión con la base de datos** |  | 55d | 2021-10-15 | 2021-12-30 |  |  |  |  |  |  | 560h |  | 2,832,080 |  |
| 41 | 1.3.3.1 | Codificacion y manejo de CRUD | manual | 7d | 2021-10-15 | 2021-10-25 | 34 |  |  |  | start no earlier than 2021-10-15 | Eliseo Ricaurte; Nicolas Rodriguez; Juan Carlos Suarez; Paola Osorio; Energia; Equipo de computo; Escritorio; Internet; Silla | 280h |  | 1,401,104 |  |
| 42 | 1.3.3.2 | Conexion base de datos | manual | 3d | 2021-11-03 | 2021-11-05 | 34 |  |  |  | start no earlier than 2021-11-03 | Eliseo Ricaurte; Nicolas Rodriguez; Juan Carlos Suarez; Paola Osorio; Energia; Equipo de computo; Escritorio; Internet; Silla | 120h |  | 609,008 |  |
| 43 | 1.3.3.3 | Crud funcional modulos del sistema | manual | 3d | 2021-12-01 | 2021-12-03 | 34 |  |  |  | start no earlier than 2021-12-01 | Eliseo Ricaurte; Juan Carlos Suarez; Nicolas Rodriguez; Paola Osorio; Energia; Equipo de computo; Escritorio; Internet; Silla | 120h |  | 609,008 |  |
| 44 | 1.3.3.4 | Informe de migración de datos | manual | 1d | 2021-12-30 | 2021-12-30 | 51 |  |  |  |  | Eliseo Ricaurte; Juan Carlos Suarez; Nicolas Rodriguez; Paola Osorio; Energia; Equipo de computo; Escritorio; Internet; Silla | 40h |  | 212,960 |  |
| 45 | 1.4 | **4. Negociacion** |  | 4d | 2022-03-11 | 2022-03-16 |  |  |  |  |  |  | 160h |  | 821,968 |  |
| 46 | 1.4.1 | Cuadro comparativo de proveedores | manual | 1d | 2022-03-11 | 2022-03-11 |  |  |  |  |  | Eliseo Ricaurte; Juan Carlos Suarez; Nicolas Rodriguez; Paola Osorio; Energia; Equipo de computo; Escritorio; Internet; Silla | 40h |  | 212,960 |  |
| 47 | 1.4.2 | Contrato de desarrollo | manual | 3d | 2022-03-14 | 2022-03-16 | 46 |  |  |  |  | Juan Carlos Suarez; Eliseo Ricaurte; Nicolas Rodriguez; Paola Osorio; Energia; Equipo de computo; Escritorio; Internet; Silla | 120h |  | 609,008 |  |
| 48 | 1.5 | **5. Evaluacion: Construccion de manuales** |  | 120d | 2021-12-06 | 2022-05-20 |  |  |  |  |  |  | 1280h |  | 8,775,700 |  |
| 49 | 1.5.1 | **Pruebas** |  | 18d | 2021-12-06 | 2021-12-29 |  |  |  |  |  |  | 720h |  | 5,973,492 |  |
| 50 | 1.5.1.1 | Documentación de las pruebas | manual | 3d | 2021-12-06 | 2021-12-08 | 43 |  |  |  |  | Eliseo Ricaurte; Juan Carlos Suarez; Nicolas Rodriguez; Paola Osorio; Energia; Equipo de computo; Escritorio; Internet; Silla | 120h |  | 609,008 |  |
| 51 | 1.5.1.2 | Pruebas (unitarias, de caja negra y blanca) | manual | 15d | 2021-12-09 | 2021-12-29 | 50 |  |  |  |  | AWS MySQL Aurora; Juan Carlos Suarez; Nicolas Rodriguez; Paola Osorio; Eliseo Ricaurte; AWS Data Pipeline; Energia; Equipo de computo; Escritorio; Internet; Silla | 600h |  | 5,364,484 |  |

| ID | WBS | Task | Type | Duration | Start | Finish | Predecessors | Constraint | Resources | Work | Cost |
| --- | --- | --- | --- | --- | --- | --- | --- | --- | --- | --- | --- |
| 52 | 1.5.2 | **Manuales** |  | 101d | 2021-12-31 | 2022-05-20 |  |  |  | 560h | 2,802,208 |
| 53 | 1.5.2.1 | Manual de operación y manual de usuario | manual | 7d | 2022-05-12 | 2022-05-20 | 50 | start no earlier than 2022-05-12 | Eliseo Ricaurte; Juan Carlos Suarez; Nicolas Rodriguez; Paola Osorio; Energia; Equipo de computo; Escritorio; Internet; Silla | 280h | 1,401,104 |
| 54 | 1.5.2.2 | Manual tecnico y manual de instalacion | manual | 7d | 2021-12-31 | 2022-01-10 | 50 | finish no earlier than 2020-12-01 | Eliseo Ricaurte; Juan Carlos Suarez; Nicolas Rodriguez; Paola Osorio; Energia; Equipo de computo; Escritorio; Internet; Silla | 280h | 1,401,104 |
