# Diagrama Gantt con depreciacion de equipos, consumo energetico y nube

Schedule from MS Project, 2020-12-01 to 2022-05-20, costs in $, A marks actual dates.
Microsoft

## Calendars

- Estándar: Mon-Fri 09:00-13:00, 15:00-19:00; Sat-Sun off. Exceptions (off unless hours are given): 2020-12-11 to 2021-01-24 (Vacaciones, recurring).

## Resources

| Resource | Group | Rate |
| --- | --- | --- |
| Paola Osorio | Programador | 6081 |
| Nicolas Rodriguez | Programador | 6081 |
| Juan Carlos Suarez | Lider | 6081 |
| Byethost |  |  |
| Escritorio |  | 2352 |
| Silla |  | 2256 |
| Equipo de computo |  | 6032 |
| Internet |  | 4296 |
| Energia |  | 429 |
| Paquete de office |  | 239000 |
| Microsoft project |  | 38270 |
| Equipo del adminsitrador |  |  |

## Schedule

| ID | WBS | Task | Type | Duration | Start | Finish | Predecessors | Complete | Remaining | Actual start | Actual finish | Constraint | Resources | Work | Actual work | Cost | Actual cost |
| --- | --- | --- | --- | --- | --- | --- | --- | --- | --- | --- | --- | --- | --- | --- | --- | --- | --- |
| 1 | 1 | **Sistema de información para la gestión de la producción avícola de traspatio urbana y periurbana con vocación de postura** |  | 384d | 2020-12-01 09:00 A | 2022-05-20 19:00 |  | 74% | 98.46d |  |  |  |  | 241.9h | 173.82h | 3,259,869.58 | 2,943,150.58 |
| 2 | 1.1 | **1. Analisis** |  | 83d | 2020-12-01 09:00 A | 2021-03-25 19:00 |  | 100% |  |  | 2021-03-05 17:00 |  |  | 44h | 44h | 286,942 | 286,942 |
| 3 | 1.1.1 | **Componente Metodologico** |  | 83d | 2020-12-01 09:00 A | 2021-03-25 19:00 |  | 100% |  |  | 2021-03-05 17:00 |  |  | 44h | 44h | 286,942 | 286,942 |
| 4 | 1.1.1.1 | Nombre del proyecto | manual | 0.06d | 2020-12-01 09:00 A | 2020-12-01 09:30 A |  | 100% |  |  |  |  | Juan Carlos Suarez; Equipo de computo; Silla; Energia; Escritorio; Internet | 1h | 1h | 18,191 | 18,191 |
| 5 | 1.1.1.2 | Objetivo general | manual | 0.75d | 2021-01-25 09:00 A | 2021-01-25 17:00 A | 4 | 100% |  |  |  | finish no earlier than 2021-01-25 17:00 | Juan Carlos Suarez; Equipo de computo [200%]; Silla [200%]; Energia; Escritorio [200%]; Internet | 1h | 1h | 28,831 | 28,831 |
| 6 | 1.1.1.3 | Objetivos especificos | manual | 1.12d | 2021-01-25 09:00 A | 2021-02-26 17:00 A | 5 | 100% |  |  |  | finish no earlier than 2021-01-25 17:00 | Juan Carlos Suarez; Equipo de computo; Silla; Energia; Escritorio; Internet [50%] | 1h | 1h | 16,043 | 16,043 |
| 7 | 1.1.1.4 | Planteamiento del problema | manual | 1d | 2021-01-25 09:00 A | 2021-01-26 17:00 A | 5 | 100% |  |  |  | start no earlier than 2021-01-25 09:00 | Juan Carlos Suarez; Equipo de computo; Silla; Energia; Escritorio; Internet | 2h | 2h | 21,446 | 21,446 |
| 8 | 1.1.1.5 | Alcance del proyecto | manual | 1.62d | 2021-01-26 09:00 A | 2021-01-27 16:00 A | 7 | 100% |  |  |  |  | Juan Carlos Suarez; Equipo de computo; Silla; Energia; Escritorio; Internet | 7h | 7h | 23,591 | 23,591 |
| 9 | 1.1.1.6 | Justificacion | manual | 1.75d | 2021-01-27 09:00 A | 2021-01-28 17:00 A | 7 | 100% |  |  |  | start no earlier than 2021-01-27 09:00 | Juan Carlos Suarez; Equipo de computo; Silla; Energia; Escritorio; Internet | 8h | 8h | 36,680 | 36,680 |
| 10 | 1.1.1.7 | **Levantamiento de informacion** |  | 20.25d | 2021-02-25 17:00 | 2021-03-25 19:00 |  | 100% |  | 2021-02-01 09:00 | 2021-03-05 17:00 |  |  | 24h | 24h | 142,160 | 142,160 |
| 11 | 1.1.1.7.1 | Entrevista a experto avicola | manual | 0.25d | 2021-02-03 09:00 A | 2021-02-03 11:00 A | 5 | 100% |  |  |  | finish no earlier than 2021-02-03 17:00 | Juan Carlos Suarez; Equipo de computo; Silla; Energia; Escritorio; Internet | 2h | 2h | 21,446 | 21,446 |
| 12 | 1.1.1.7.2 | Entrevista a productor avicola | manual | 1.25d | 2021-02-05 09:00 A | 2021-02-08 17:00 A | 11 | 100% |  |  |  | start no earlier than 2021-02-05 09:00 | Juan Carlos Suarez; Equipo de computo; Silla; Energia; Escritorio; Internet | 2h | 2h | 21,446 | 21,446 |
| 13 | 1.1.1.7.3 | Encuesta | manual | 10.5d | 2021-02-01 09:00 A | 2021-03-05 17:00 A | 11 | 100% |  |  |  | finish no earlier than 2021-02-05 17:00 | Juan Carlos Suarez; Energia; Equipo de computo [200%]; Escritorio [200%]; Internet [300%]; Silla [200%] | 20h | 20h | 99,268 | 99,268 |
| 14 | 1.2 | **2. Planeacion:** |  | 146.06d | 2021-03-04 09:00 A | 2021-09-24 09:30 A |  | 100% |  |  |  |  |  | 43.9h | 43.9h | 439,117.9 | 439,117.9 |
| 15 | 1.2.1 | **Informe de Requerimientos (Estandar IEEE 830)** |  | 20.25d | 2021-03-04 09:00 A | 2021-04-01 11:00 |  | 100% |  |  | 2021-03-10 17:00 |  |  | 11.4h | 11.4h | 155,591.4 | 155,591.4 |
| 16 | 1.2.1.1 | Requerimientos funcionales y no funcionales | manual | 1.75d | 2021-03-05 09:00 A | 2021-03-08 17:00 A | 10 | 100% |  |  |  |  | Juan Carlos Suarez; Energia; Equipo de computo [200%]; Escritorio [200%]; Internet; Silla [200%] | 3h | 3h | 32,515 | 32,515 |
| 17 | 1.2.1.2 | Especificaciones de casos de uso | manual | 1d | 2021-03-08 10:00 A | 2021-03-09 17:00 A | 16 | 100% |  |  |  | start no earlier than 2020-12-03 09:00 | Juan Carlos Suarez; Energia; Equipo de computo [200%]; Escritorio [200%]; Internet; Silla [200%] | 3h | 3h | 32,515 | 32,515 |
| 18 | 1.2.1.3 | Diagrama de casos de uso | manual | 1.75d | 2021-03-04 09:00 A | 2021-03-05 17:00 A | 17 | 100% |  |  |  |  | Nicolas Rodriguez; Energia; Equipo de computo; Escritorio; Internet; Silla | 4h | 4h | 27,956 | 27,956 |
| 19 | 1.2.1.4 | Caso de uso extendido | manual | 1.75d | 2021-03-09 09:00 A | 2021-03-10 17:00 A | 17 | 100% |  |  |  |  | Nicolas Rodriguez; Juan Carlos Suarez; Energia; Equipo de computo [400%]; Escritorio [400%]; Internet [400%]; Silla [400%] | 1.4h | 1.4h | 62,605.4 | 62,605.4 |
| 20 | 1.2.2 | **Ejecucion admnistrativa** |  | 104.06d | 2021-05-03 09:00 A | 2021-09-24 09:30 A |  | 100% |  |  |  |  |  | 15.5h | 15.5h | 147,053.5 | 147,053.5 |
| 21 | 1.2.2.1 | Cronograma, presupuesto y selección de personal | manual | 1.75d | 2021-05-03 09:00 A | 2021-05-04 17:00 A | 5 | 100% |  |  |  |  | Juan Carlos Suarez; Equipo de computo; Silla; Energia; Escritorio; Internet | 4h | 4h | 27,956 | 27,956 |
| 22 | 1.2.2.2 | Informe de costos (hardware y software) | manual | 1d | 2021-05-05 09:00 A | 2021-05-05 19:00 A | 21 | 100% |  |  |  |  | Juan Carlos Suarez; Energia; Equipo de computo; Escritorio; Internet; Silla | 8h | 8h | 32,072 | 32,072 |
| 23 | 1.2.2.3 | Actualizacion de Informe de costos (hardware y software) |  | 1d | 2021-05-17 09:00 A | 2021-05-17 19:00 A | 22 | 100% |  |  |  |  | Energia [12.5%]; Equipo de computo; Escritorio; Internet; Juan Carlos Suarez [12.5%]; Silla | 2h | 2h | 21,446 | 21,446 |
| 24 | 1.2.2.4 | Uso de sistemas de integración continua |  | 0.06d | 2021-09-24 09:00 A | 2021-09-24 09:30 A | 22 | 100% |  |  |  | start no earlier than 2021-09-24 09:00 | Energia; Equipo de computo; Escritorio; Internet; Microsoft project; Silla | 0.5h | 0.5h | 53,420.5 | 53,420.5 |
| 25 | 1.2.2.5 | Inventario de hardware y software | manual | 1d | 2021-05-06 09:00 A | 2021-05-06 19:00 A | 22 | 100% |  |  |  |  | Energia; Escritorio; Internet; Juan Carlos Suarez; Silla | 1h | 1h | 12,159 | 12,159 |

| ID | WBS | Task | Type | Duration | Start | Finish | Predecessors | Complete | Remaining | Actual start | Actual finish | Total slack | Constraint | Resources | Work | Actual work | Cost | Actual cost |
| --- | --- | --- | --- | --- | --- | --- | --- | --- | --- | --- | --- | --- | --- | --- | --- | --- | --- | --- |
| 26 | 1.2.3 | **Diseño conceptual** |  | 43d | 2021-03-12 09:00 A | 2021-05-11 19:00 |  | 100% |  |  | 2021-05-11 17:00 |  |  |  | 17h | 17h | 136,473 | 136,473 |
| 27 | 1.2.3.1 | Mapa de procesos BPMN | manual | 0.25d | 2021-03-18 15:00 A | 2021-03-18 17:00 A | 12 | 100% |  |  |  |  | start no earlier than 2020-12-09 09:00 | Juan Carlos Suarez; Equipo de computo; Silla; Energia; Escritorio; Internet | 2h | 2h | 21,446 | 21,446 |
| 28 | 1.2.3.2 | Diagrama de flujo de proceso BPMN | manual | 1.75d | 2021-03-12 09:00 A | 2021-03-15 17:00 A | 17 | 100% |  |  |  |  | start no earlier than 2020-12-09 09:00 | Juan Carlos Suarez; Energia; Equipo de computo [200%]; Escritorio [200%]; Internet [200%]; Silla [200%] | 3h | 3h | 36,811 | 36,811 |
| 29 | 1.2.3.3 | Diagrama de despliegue | manual | 0.25d | 2021-05-10 09:00 A | 2021-05-10 11:00 A | 17 | 100% |  |  |  |  | start no earlier than 2021-05-10 09:00 | Paola Osorio; Energia; Equipo de computo; Escritorio; Internet; Silla | 2h | 2h | 21,446 | 21,446 |
| 30 | 1.2.3.4 | Modelo entidad-relacion y diccionario de datos | manual | 1d | 2021-05-10 09:00 A | 2021-05-10 19:00 A | 17 | 100% |  |  |  |  | start no earlier than 2021-05-10 09:00 | Nicolas Rodriguez; Energia; Equipo de computo; Escritorio; Internet; Silla | 8h | 8h | 40,976 | 40,976 |
| 31 | 1.2.3.5 | Diagrama de clases | manual | 1.25d | 2021-05-10 15:00 A | 2021-05-11 17:00 A | 30 | 100% |  |  |  |  |  | Energia; Equipo de computo; Escritorio; Internet; Silla | 2h | 2h | 15,794 | 15,794 |
| 32 | 1.3 | **3. Ejecucion:** |  | 169d | 2021-05-10 09:00 A | 2021-12-30 19:00 |  | 51% | 83.43d |  |  |  |  |  | 130h | 63.12h | 896,897 | 588,564.79 |
| 33 | 1.3.1 | **Base de datos** |  | 33.75d | 2021-09-13 09:00 A | 2021-10-28 17:00 |  | 100% |  |  | 2021-09-20 17:00 |  |  |  | 24h | 24h | 145,536 | 145,536 |
| 34 | 1.3.1.1 | Construccion de la Base de Datos (DDL) | manual | 0.75d | 2021-09-13 09:00 A | 2021-09-13 17:00 A | 30 | 100% |  |  |  |  | finish no earlier than 2021-09-13 17:00 | Nicolas Rodriguez; Juan Carlos Suarez; Paola Osorio; Energia; Equipo de computo; Escritorio; Internet; Silla | 8h | 8h | 52,280 | 52,280 |
| 35 | 1.3.1.2 | Datos insertados en la Base de Datos (DML) | manual | 1d | 2021-09-17 09:00 A | 2021-09-17 19:00 A | 34 | 100% |  |  |  |  | start no earlier than 2021-09-17 09:00 | Nicolas Rodriguez; Juan Carlos Suarez; Paola Osorio; Energia; Equipo de computo; Escritorio; Internet; Silla | 8h | 8h | 52,280 | 52,280 |
| 36 | 1.3.1.3 | Consultas y Joins en la Base de Datos (DML) | manual | 1.75d | 2021-09-17 09:00 A | 2021-09-20 17:00 A | 34 | 100% |  |  |  |  | start no earlier than 2021-09-17 09:00 | Paola Osorio; Energia; Equipo de computo; Escritorio; Internet; Silla | 8h | 8h | 40,976 | 40,976 |
| 37 | 1.3.2 | **Prototipado** |  | 97.75d | 2021-05-10 09:00 A | 2021-09-22 17:00 A |  | 100% |  |  |  |  |  |  | 31h | 31h | 139,255 | 139,255 |
| 38 | 1.3.2.1 | Prototipo funcional: Mockup | manual | 4d | 2021-05-10 09:00 A | 2021-05-13 19:00 A | 15 | 100% |  |  |  |  | start no earlier than 2021-05-10 09:00 | Juan Carlos Suarez; Energia; Equipo de computo; Escritorio; Internet; Silla | 16h | 16h | 67,016 | 67,016 |
| 39 | 1.3.2.2 | Prototipo no funcional: HTML y CCS |  | 0.75d | 2021-09-22 09:00 A | 2021-09-22 17:00 A | 38 | 100% |  |  |  |  | finish no earlier than 2021-09-22 17:00 | Energia; Equipo de computo; Escritorio; Internet; Juan Carlos Suarez; Nicolas Rodriguez; Paola Osorio; Silla | 15h | 15h | 72,239 | 72,239 |
| 40 | 1.3.3 | **Codificacion y conexión con la base de datos** |  | 27d | 2021-11-03 09:00 A | 2021-12-09 19:00 |  | 27% | 19.61d |  |  | 0d |  |  | 75h | 8.12h | 612,106 | 303,773.79 |
| 41 | 1.3.3.1 | Codificacion y manejo de CRUD | manual | 7d | 2021-12-01 09:00 A | 2021-12-09 19:00 | 34 | 10% | 6.3d |  |  |  | start no earlier than 2021-12-01 09:00 | Nicolas Rodriguez; Paola Osorio; Energia; Equipo de computo; Escritorio; Internet; Silla | 36h | 3.6h | 166,028 | 16,602.8 |
| 42 | 1.3.3.2 | Conexion base de datos | manual | 3d | 2021-11-03 09:00 A | 2021-11-05 19:00 A | 34 | 100% |  |  |  |  | start no earlier than 2021-11-03 09:00 | Nicolas Rodriguez; Juan Carlos Suarez; Paola Osorio; Energia; Equipo de computo; Escritorio; Internet; Silla | 1h | 1h | 19,604 | 19,604 |
| 43 | 1.3.3.3 | Crud funcional modulos del sistema | manual | 6.75d | 2021-12-01 09:00 A | 2021-12-09 17:00 | 34 | 5% | 6.41d |  |  |  | start no earlier than 2021-12-01 09:00 | Nicolas Rodriguez; Paola Osorio; Energia; Equipo de computo; Escritorio; Internet; Silla | 36h | 1.52h | 166,028 | 7,120.99 |
| 44 | 1.3.3.4 | Informe de migración de datos | manual | 0.75d | 2021-12-09 09:00 A | 2021-12-09 17:00 A | 57, 51 | 100% |  |  |  |  |  | Energia; Equipo de computo; Escritorio; Internet; Silla; Juan Carlos Suarez; Paquete de office | 2h | 2h | 260,446 | 260,446 |
| 45 | 1.4 | **4. Negociacion** |  | 4d | 2022-03-11 09:00 | 2022-03-16 19:00 |  |  |  |  |  |  |  |  |  |  |  |  |
| 46 | 1.4.1 | Cuadro comparativo de proveedores | manual | 1d | 2022-03-11 09:00 | 2022-03-11 19:00 |  |  |  |  |  |  |  |  |  |  |  |  |
| 47 | 1.4.2 | Contrato de desarrollo | manual | 3d | 2022-03-14 09:00 | 2022-03-16 19:00 | 46 |  |  |  |  |  |  |  |  |  |  |  |
| 48 | 1.5 | **5. Evaluacion: Pruebas y construccion de planes y manuales** |  | 120d | 2021-12-06 09:00 | 2022-05-20 19:00 |  | 96% | 4.87d | 2021-11-15 09:00 |  |  |  |  | 24h | 22.8h | 1,636,912.68 | 1,628,525.88 |
| 49 | 1.5.1 | **Pruebas** |  | 18d | 2021-12-06 09:00 | 2021-12-29 19:00 |  | 90% | 1.85d | 2021-12-10 09:00 |  |  |  |  | 8h | 6.8h | 55,856.48 | 47,469.68 |
| 50 | 1.5.1.1 | Documentación de las pruebas |  | 0.48d | 2021-12-11 09:00 A | 2021-12-11 12:50 A | 51, 43 | 100% |  |  |  |  |  | Paola Osorio; Energia; Equipo de computo [30%]; Escritorio [30%]; Internet [30%]; Silla [30%] | 4h | 4h | 27,900.48 | 27,900.48 |
| 51 | 1.5.1.2 | Pruebas (unitarias de caja blanca y negra) |  | 0.25d | 2021-12-10 09:00 A | 2021-12-10 11:00 | 41 | 70% | 0.07d |  |  | 115.75d | start no earlier than 2021-12-03 09:00 | Byethost; Paola Osorio; Energia; Equipo de computo; Escritorio; Internet; Silla | 4h | 2.8h | 27,956 | 19,569.2 |

| ID | WBS | Task | Duration | Start | Finish | Predecessors | Complete | Constraint | Resources | Work | Actual work | Cost | Actual cost |
| --- | --- | --- | --- | --- | --- | --- | --- | --- | --- | --- | --- | --- | --- |
| 52 | 1.5.2 | **Manuales** | 1.83d | 2021-11-24 09:00 A | 2021-11-25 17:40 A |  | 100% |  |  | 7h | 7h | 789,953.2 | 789,953.2 |
| 53 | 1.5.2.1 | Manual de usuario | 0.24d | 2021-11-24 09:00 A | 2021-11-25 17:40 A | 38 | 100% | finish no earlier than 2021-11-24 17:00 | Energia; Equipo de computo; Escritorio; Internet; Silla; Juan Carlos Suarez; Paquete de office | 2h | 2h | 265,806.2 | 265,806.2 |
| 54 | 1.5.2.2 | Manual tecnico (informe) | 0.19d | 2021-11-24 09:00 A | 2021-11-24 17:00 A | 38 | 100% | finish no earlier than 2021-11-24 17:00 | Energia; Equipo de computo; Escritorio; Internet; Silla; Juan Carlos Suarez; Paquete de office | 3h | 3h | 263,701 | 263,701 |
| 55 | 1.5.2.3 | Manual de instalacion | 0.12d? | 2021-11-24 09:00 A | 2021-11-24 10:30 A |  | 100% |  | Juan Carlos Suarez; Energia; Equipo de computo; Escritorio; Internet; Silla; Paquete de office | 2h | 2h | 260,446 | 260,446 |
| 56 | 1.5.3 | **Planes** | 0.19d? | 2021-11-15 09:00 A | 2021-11-15 10:30 A |  | 100% |  |  | 9h | 9h | 791,103 | 791,103 |
| 57 | 1.5.3.1 | Plan de migracion de datos | 0.19d? | 2021-11-15 09:00 A | 2021-11-15 10:30 A | 34 | 100% |  | Energia; Equipo de computo; Escritorio; Internet; Nicolas Rodriguez; Paquete de office; Silla | 3h | 3h | 263,701 | 263,701 |
| 58 | 1.5.3.2 | Plan de instalacion | 0.19d? | 2021-11-15 09:00 A | 2021-11-15 10:30 A | 55 | 100% |  | Energia; Equipo de computo; Escritorio; Internet; Juan Carlos Suarez; Paquete de office; Silla | 3h | 3h | 263,701 | 263,701 |
| 59 | 1.5.3.3 | Plan de respaldo | 0.19d? | 2021-11-15 09:00 A | 2021-11-15 10:30 A |  | 100% |  | Energia; Equipo de computo; Escritorio; Internet; Juan Carlos Suarez; Paquete de office; Silla | 3h | 3h | 263,701 | 263,701 |
