# Diagrama Gantt con depreciacion de equipos, consumo energetico y nube

Schedule from MS Project, 2020-12-01 to 2022-05-20, costs in $, A marks actual dates.
Microsoft

## Calendars

- Estándar: Mon-Fri 09:00-13:00, 15:00-19:00; Sat-Sun off. Exceptions (off unless hours are given): 2021-01-02 09:00-13:00, 15:00-19:00.

## Resources

| Resource | Rate | Cost per use |
| --- | --- | --- |
| Paola Osorio | 6417 | 1644 |
| Maria de los Angeles Ordoñez | 6417 | 1644 |
| Eliseo Ricaurte | 6417 | 1644 |
| Nicolas Rodriguez | 6417 | 1644 |
| Juan Carlos Suarez | 6417 | 1644 |
| AWS MySQL Aurora | 201410 |  |
| AWS Data Pipeline | 1159245 |  |

## Schedule

| ID | WBS | Task | Type | Duration | Start | Finish | Predecessors | Complete | Remaining | Total slack | Constraint | Resources | Work | Actual work | Cost | Actual cost |
| --- | --- | --- | --- | --- | --- | --- | --- | --- | --- | --- | --- | --- | --- | --- | --- | --- |
| 1 | 1 | **Sistema de información para la gestión de la producción avícola de traspatio urbana y periurbana con vocación de postura** |  | 385d | 2020-12-01 09:00 A | 2022-05-20 19:00 |  | 15% | 328.83d | 0d |  |  | 1981h | 109h | 14,209,184 | 742,197 |
| 2 | 1.1 | **1. Analisis** |  | 78.25d | 2020-12-01 09:00 A | 2021-03-18 11:00 A |  | 100% |  |  |  |  | 37h | 37h | 253,869 | 253,869 |
| 3 | 1.1.1 | **Componente Metodologico** |  | 78.25d | 2020-12-01 09:00 A | 2021-03-18 11:00 A |  | 100% |  |  |  |  | 37h | 37h | 253,869 | 253,869 |
| 4 | 1.1.1.1 | Nombre del proyecto |  | 0.12d | 2020-12-01 09:00 A | 2020-12-01 10:00 A |  | 100% |  |  |  | Juan Carlos Suarez | 1h | 1h | 8,061 | 8,061 |
| 5 | 1.1.1.2 | Objetivo general |  | 0.12d | 2021-01-02 09:00 A | 2021-01-02 10:00 A | 4 | 100% |  |  | start no earlier than 2021-01-02 09:00 | Juan Carlos Suarez | 1h | 1h | 8,061 | 8,061 |
| 6 | 1.1.1.3 | Objetivos especificos |  | 0.12d | 2021-01-07 09:00 A | 2021-01-07 10:00 A | 5 | 100% |  |  | start no earlier than 2021-01-07 09:00 | Juan Carlos Suarez | 1h | 1h | 8,061 | 8,061 |
| 7 | 1.1.1.4 | Planteamiento del problema |  | 0.5d | 2021-01-07 09:00 A | 2021-01-07 13:00 A | 5 | 100% |  |  | start no earlier than 2021-01-07 09:00 | Juan Carlos Suarez | 4h | 4h | 27,312 | 27,312 |
| 8 | 1.1.1.5 | Alcance del proyecto |  | 0.25d | 2021-01-08 09:00 A | 2021-01-08 11:00 A | 7 | 100% |  |  | start no earlier than 2021-01-07 09:00 | Juan Carlos Suarez | 2h | 2h | 14,478 | 14,478 |
| 9 | 1.1.1.6 | Justificacion |  | 0.5d | 2021-01-08 09:00 A | 2021-01-08 13:00 A | 7 | 100% |  |  | start no earlier than 2021-01-07 09:00 | Juan Carlos Suarez | 4h | 4h | 27,312 | 27,312 |
| 10 | 1.1.1.7 | **Levantamiento de informacion** |  | 53.25d | 2021-01-04 09:00 A | 2021-03-18 11:00 A |  | 100% |  |  |  |  | 24h | 24h | 160,584 | 160,584 |
| 11 | 1.1.1.7.1 | Entrevista a experto avicola |  | 0.25d | 2021-01-04 09:00 A | 2021-01-04 11:00 A | 5 | 100% |  |  |  | Juan Carlos Suarez | 2h | 2h | 14,478 | 14,478 |
| 12 | 1.1.1.7.2 | Entrevista a productor avicola |  | 0.25d | 2021-03-18 09:00 A | 2021-03-18 11:00 A | 11 | 100% |  |  | start no earlier than 2021-03-18 09:00 | Juan Carlos Suarez | 2h | 2h | 14,478 | 14,478 |
| 13 | 1.1.1.7.3 | Encuesta |  | 1.25d | 2021-03-17 09:00 A | 2021-03-18 11:00 A | 11 | 100% |  |  | finish no earlier than 2021-03-25 19:00 | Eliseo Ricaurte; Juan Carlos Suarez | 20h | 20h | 131,628 | 131,628 |
| 14 | 1.2 | **2. Planeacion:** |  | 114d | 2021-03-03 09:00 A | 2021-08-09 19:00 |  | 55% | 51.38d | 0d |  |  | 136h | 56h | 905,592 | 384,012 |
| 15 | 1.2.1 | **Informe de Requerimientos (Estandar IEEE 830)** |  | 5.75d | 2021-03-03 09:00 A | 2021-03-10 17:00 A |  | 100% |  |  |  |  | 23h | 23h | 160,743 | 160,743 |
| 16 | 1.2.1.1 | Requerimientos funcionales y no funcionales | manual | 0.12d | 2021-03-05 09:00 A | 2021-03-05 10:00 A | 10 | 100% |  |  |  | Juan Carlos Suarez; Maria de los Angeles Ordoñez | 2h | 2h | 16,122 | 16,122 |
| 17 | 1.2.1.2 | Especificaciones de casos de uso |  | 0.12d | 2021-03-03 09:00 A | 2021-03-05 11:00 A | 16 | 100% |  |  | start no earlier than 2020-12-03 09:00 | Maria de los Angeles Ordoñez; Juan Carlos Suarez | 1h | 1h | 9,705 | 9,705 |
| 18 | 1.2.1.3 | Diagrama de casos de uso | manual | 0.5d | 2021-03-04 09:00 A | 2021-03-04 13:00 A | 17 | 100% |  |  |  | Nicolas Rodriguez | 4h | 4h | 27,312 | 27,312 |
| 19 | 1.2.1.4 | Caso de uso extendido | milestone, manual | 0d | 2021-03-09 09:00 A | 2021-03-10 17:00 A | 17 | 100% |  |  |  | Nicolas Rodriguez; Eliseo Ricaurte; Juan Carlos Suarez; Maria de los Angeles Ordoñez | 16h | 16h | 107,604 | 107,604 |
| 20 | 1.2.2 | **Ejecucion admnistrativa** |  | 4d | 2021-05-03 09:00 A | 2021-05-06 19:00 |  | 50% | 2d | 0d |  |  | 32h | 16h | 208,632 | 104,316 |
| 21 | 1.2.2.1 | Cronograma, presupuesto y selección de personal | manual | 2d | 2021-05-03 09:00 A | 2021-05-04 19:00 A | 5 | 100% |  |  |  | Juan Carlos Suarez | 16h | 16h | 104,316 | 104,316 |
| 22 | 1.2.2.2 | Informe de costos (hardware y software) | manual | 2d | 2021-05-05 09:00 | 2021-05-06 19:00 | 21 |  |  |  |  | Juan Carlos Suarez | 16h |  | 104,316 |  |
| 23 | 1.2.3 | **Diseño conceptual** |  | 110d | 2021-03-09 09:00 A | 2021-08-09 19:00 |  | 52% | 53.33d | 0d |  |  | 81h | 17h | 536,217 | 118,953 |
| 24 | 1.2.3.1 | Mapa de procesos BPMN |  | 0.12d | 2021-03-19 09:00 A | 2021-03-19 10:00 A | 12 | 100% |  |  | start no earlier than 2020-12-09 09:00 | Juan Carlos Suarez | 1h | 1h | 8,061 | 8,061 |
| 25 | 1.2.3.2 | Diagrama de flujo de proceso BPMN |  | 0.38d | 2021-03-09 09:00 A | 2021-03-10 11:00 A | 17 | 100% |  |  | start no earlier than 2020-12-09 09:00 | Juan Carlos Suarez; Maria de los Angeles Ordoñez | 3h | 3h | 22,539 | 22,539 |
| 26 | 1.2.3.3 | Diagrama de despliegue |  | 0.12d | 2021-05-10 09:00 A | 2021-05-10 10:00 A | 17 | 100% |  |  | start no earlier than 2021-05-10 09:00 | Paola Osorio | 1h | 1h | 8,061 | 8,061 |
| 27 | 1.2.3.4 | Modelo entidad-relacion y diccionario de datos |  | 0.5d | 2021-05-10 09:00 A | 2021-05-10 13:00 A | 17 | 100% |  |  | start no earlier than 2021-05-10 09:00 | Nicolas Rodriguez | 4h | 4h | 27,312 | 27,312 |
| 28 | 1.2.3.5 | Diagrama de clases | manual | 1d | 2021-05-10 15:00 A | 2021-05-11 13:00 A | 27 | 100% |  |  |  | Eliseo Ricaurte | 8h | 8h | 52,980 | 52,980 |
| 29 | 1.2.3.6 | Diagrama de distribución mínimo en software | manual | 2d | 2021-08-06 09:00 | 2021-08-09 19:00 | 31 |  |  |  |  | Eliseo Ricaurte; Juan Carlos Suarez; Nicolas Rodriguez; Paola Osorio | 64h |  | 417,264 |  |

| ID | WBS | Task | Type | Duration | Start | Finish | Predecessors | Complete | Remaining | Total slack | Free slack | Constraint | Resources | Work | Actual work | Cost | Actual cost |
| --- | --- | --- | --- | --- | --- | --- | --- | --- | --- | --- | --- | --- | --- | --- | --- | --- | --- |
| 30 | 1.3 | **3. Ejecucion:** |  | 161d | 2021-05-10 09:00 A | 2021-12-20 19:00 |  | 9% | 146.36d | 109d |  |  |  | 656h | 16h | 4,257,228 | 104,316 |
| 31 | 1.3.1 | **Base de datos** |  | 5d | 2021-07-30 09:00 | 2021-08-05 19:00 |  |  |  | 186d | 0d |  |  | 192h |  | 1,251,792 |  |
| 32 | 1.3.1.1 | Construccion de la Base de Datos |  | 3d | 2021-07-30 09:00 | 2021-08-03 19:00 | 27 |  |  | 186d | 0d | start no earlier than 2021-07-30 09:00 | Nicolas Rodriguez; Eliseo Ricaurte; Juan Carlos Suarez; Paola Osorio | 96h |  | 622,608 |  |
| 33 | 1.3.1.2 | Datos insertados en la Base de Datos |  | 1d | 2021-08-04 09:00 | 2021-08-04 19:00 | 32 |  |  | 205d |  | start no earlier than 2021-07-30 09:00 | Nicolas Rodriguez; Eliseo Ricaurte; Juan Carlos Suarez; Paola Osorio | 32h |  | 211,920 |  |
| 34 | 1.3.1.3 | Consultas y Joins en la Base de Datos |  | 2d | 2021-08-04 09:00 | 2021-08-05 19:00 | 32 |  |  | 204d |  | start no earlier than 2021-07-30 09:00 | Nicolas Rodriguez; Eliseo Ricaurte; Juan Carlos Suarez; Paola Osorio | 64h |  | 417,264 |  |
| 35 | 1.3.2 | **Prototipado** |  | 2d | 2021-05-10 09:00 A | 2021-05-11 19:00 A |  | 100% |  |  |  |  |  | 16h | 16h | 104,316 | 104,316 |
| 36 | 1.3.2.1 | Prototipo no funcional: Mockup |  | 2d | 2021-05-10 09:00 A | 2021-05-11 19:00 A | 15 | 100% |  |  |  | start no earlier than 2021-05-10 09:00 | Juan Carlos Suarez | 16h | 16h | 104,316 | 104,316 |
| 37 | 1.3.3 | **Codificacion y conexión con la base de datos** |  | 36d | 2021-10-15 09:00 | 2021-12-03 19:00 |  |  |  | 120d |  |  |  | 416h |  | 2,689,200 |  |
| 38 | 1.3.3.1 | Codificacion y manejo de CRUD |  | 7d | 2021-10-15 09:00 | 2021-10-25 19:00 | 32 |  |  | 149d |  | start no earlier than 2021-10-15 09:00 | Eliseo Ricaurte; Nicolas Rodriguez; Juan Carlos Suarez; Paola Osorio | 224h |  | 1,443,984 |  |
| 39 | 1.3.3.2 | Conexion base de datos |  | 3d | 2021-11-03 09:00 | 2021-11-05 19:00 | 32 |  |  | 140d |  | start no earlier than 2021-11-03 09:00 | Eliseo Ricaurte; Nicolas Rodriguez; Juan Carlos Suarez; Paola Osorio | 96h |  | 622,608 |  |
| 40 | 1.3.3.3 | Crud funcional modulos del sistema |  | 3d | 2021-12-01 09:00 | 2021-12-03 19:00 | 32 |  |  | 101d | 0d | start no earlier than 2021-12-01 09:00 | Eliseo Ricaurte; Juan Carlos Suarez; Nicolas Rodriguez; Paola Osorio | 96h |  | 622,608 |  |
| 41 | 1.3.4 | Informe de migración de datos | manual | 1d | 2021-12-20 09:00 | 2021-12-20 19:00 | 48 |  |  |  |  |  | Eliseo Ricaurte; Juan Carlos Suarez; Nicolas Rodriguez; Paola Osorio | 32h |  | 211,920 |  |
| 42 | 1.4 | **4. Negociacion** |  | 4d | 2022-03-11 09:00 | 2022-03-16 19:00 |  |  |  | 0d |  |  |  | 128h |  | 834,528 |  |
| 43 | 1.4.1 | Cuadro comparativo de proveedores | manual | 1d | 2022-03-11 09:00 | 2022-03-11 19:00 |  |  |  |  |  |  | Eliseo Ricaurte; Juan Carlos Suarez; Nicolas Rodriguez; Paola Osorio | 32h |  | 211,920 |  |
| 44 | 1.4.2 | Contrato de desarrollo |  | 3d | 2022-03-14 09:00 | 2022-03-16 19:00 | 43 |  |  | 47d |  |  | Juan Carlos Suarez; Eliseo Ricaurte; Nicolas Rodriguez; Paola Osorio | 96h |  | 622,608 |  |
| 45 | 1.5 | **5. Evaluacion: Construccion de manuales** |  | 120d | 2021-12-06 09:00 | 2022-05-20 19:00 |  |  |  | 0d |  |  |  | 1024h |  | 7,957,967 |  |
| 46 | 1.5.1 | **Pruebas** |  | 18d | 2021-12-06 09:00 | 2021-12-29 19:00 |  |  |  | 0d |  |  |  | 576h |  | 5,069,999 |  |
| 47 | 1.5.1.1 | Documentación de las pruebas | manual | 3d | 2021-12-06 09:00 | 2021-12-08 19:00 | 40 |  |  |  |  |  | Eliseo Ricaurte; Juan Carlos Suarez; Nicolas Rodriguez; Paola Osorio | 96h |  | 622,608 |  |
| 48 | 1.5.1.2 | Pruebas (unitarias, de caja negra y blanca) | manual | 15d | 2021-12-09 09:00 | 2021-12-29 19:00 | 47 |  |  |  |  |  | AWS MySQL Aurora; Juan Carlos Suarez; Nicolas Rodriguez; Paola Osorio; Eliseo Ricaurte; AWS Data Pipeline | 480h |  | 4,447,391 |  |
| 49 | 1.5.2 | **Manuales** |  | 117d | 2021-12-09 09:00 | 2022-05-20 19:00 |  |  |  | 0d |  |  |  | 448h |  | 2,887,968 |  |
| 50 | 1.5.2.1 | Manual de operación y manual de usuario |  | 7d | 2022-05-12 09:00 | 2022-05-20 19:00 | 47 |  |  | 0d |  | start no earlier than 2022-05-12 09:00 | Eliseo Ricaurte; Juan Carlos Suarez; Nicolas Rodriguez; Paola Osorio | 224h |  | 1,443,984 |  |
| 51 | 1.5.2.2 | Manual tecnico y manual de instalacion |  | 7d | 2021-12-09 09:00 | 2021-12-17 19:00 | 47 |  |  | 110d |  | finish no earlier than 2020-12-01 19:00 | Eliseo Ricaurte; Juan Carlos Suarez; Nicolas Rodriguez; Paola Osorio | 224h |  | 1,443,984 |  |
